# Test Board Design

How a schedule from ProjectLibre changed from version to version. A marks actual dates.

## Version 1 (saved 2023-10-25)

Note of the change: add board physical plan and gantt chart

| ID | WBS | Task | Duration | Start | Finish | Predecessors | Constraint |
| --- | --- | --- | --- | --- | --- | --- | --- |
| 1 | 1 | **Summary Test Board Design & Fab** | 41d? | 2023-10-26 | 2023-12-21 |  | start no earlier than 2023-10-26 |
| 2 | 1.1 | **Create Test Plan doc** | 0d? | 2023-10-26 | 2023-10-26 |  |  |
| 3 |  | Read wiki PCB Tool Ch01 | 0d? | 2023-10-26 | 2023-10-26 |  |  |
| 4 |  | Create new board repo, Test Plan folder | 0d? | 2023-10-26 | 2023-10-26 | 3 | start no earlier than 2023-10-12 |
| 5 |  | Designate Chief & First Mate for board | 0d? | 2023-10-26 | 2023-10-26 | 4 | start no earlier than 2023-10-12 |
| 6 |  | Create Altium schematic symbol for chip | 0d? | 2023-10-26 | 2023-10-26 | 5 |  |
| 7 |  | Paste chip/pkg schematic symbol into Test Plan doc | 0d? | 2023-10-26 | 2023-10-26 | 6 |  |
| 8 |  | Make decisions about #boards to fab/stuff | 0d? | 2023-10-26 | 2023-10-26 | 7 | start no earlier than 2023-10-12 |
| 9 | 1.2 | **Create Altium schematic for test board** | 2d? | 2023-10-26 | 2023-10-27 | 2 | start no earlier than 2023-10-26 |
| 10 |  | Make decisions on connector part numbers | 0d | 2023-10-26 | 2023-10-26 |  |  |
| 11 |  | Make decisions on reset switches, voltage domains | 0d | 2023-10-26 | 2023-10-26 | 10 |  |
| 12 |  | Add part records to PartSync if new parts | 0d | 2023-10-26 | 2023-10-26 | 11 |  |
| 13 |  | Create new Altium pcb project | 0d | 2023-10-26 | 2023-10-26 | 12 |  |
| 14 |  | Set Altium hierarchical project options | 0d | 2023-10-26 | 2023-10-26 | 13 |  |
| 15 |  | Make power domains global variables | 1d? | 2023-10-26 | 2023-10-26 | 14 |  |
| 16 |  | Put sheet symbols on top-level schematic | 0d | 2023-10-26 | 2023-10-26 | 15 |  |
| 17 |  | Place schematic symbols f/BWRC.SchLib not web | 0d | 2023-10-26 | 2023-10-26 | 16 |  |
| 18 |  | Add manufacturer's part numberto all ICs, conns | 0d? | 2023-10-26 | 2023-10-26 | 17 |  |
| 19 |  | Check Altium project's Parameter Manager | 1d | 2023-10-27 | 2023-10-27 | 18 |  |
| 20 |  | Wire up schematic | 0d | 2023-10-27 | 2023-10-27 | 19 |  |
| 21 |  | Re-set reference designators and re-annotate | 0d | 2023-10-27 | 2023-10-27 | 20 | start no earlier than 2023-10-13 |
| 22 |  | Compile Altium project, check erro Messages | 0d | 2023-10-27 | 2023-10-27 | 21 |  |
| 23 |  | Fill in title block for each schematic sheet | 0d | 2023-10-27 | 2023-10-27 | 22 | start no earlier than 2023-10-12 |
| 24 | 1.3 | **Create Altium output files for hand-off** | 1d? | 2023-10-27 | 2023-10-30 | 9 | start no earlier than 2023-10-26 |
| 25 |  | Read wiki PCB Tool Ch10d first half | 1d | 2023-10-30 | 2023-10-30 |  |  |
| 26 |  | Add Outjob file to Altium pcb project | 0d | 2023-10-27 | 2023-10-27 |  |  |
| 27 |  | Generate pick-and-place file from Outjob window | 1d? | 2023-10-30 | 2023-10-30 | 26 |  |
| 28 |  | Generate schematic pdf from Outjob window | 0d | 2023-10-30 | 2023-10-30 | 27 |  |
| 29 |  | Create folder in board repo for Schematics_pdf | 0d | 2023-10-30 | 2023-10-30 | 28 |  |
| 30 |  | Store latest pdf of schematics there with date/time | 0d | 2023-10-30 | 2023-10-30 | 29 |  |
| 31 | 1.4 | **Create Bill of Materials in BOM Builder** | 1d? | 2023-10-27 | 2023-10-30 | 9 | start no earlier than 2023-10-26 |
| 32 |  | Read wiki Ch10d second half | 1d? | 2023-10-30 | 2023-10-30 |  |  |
| 33 |  | Configure BOM Builder options | 0d | 2023-10-27 | 2023-10-27 |  |  |
| 34 |  | Configure RefDesMapping file for BOM Builder | 0d | 2023-10-27 | 2023-10-27 | 33 |  |
| 35 |  | Configure inpul list processor .dll for importing parts | 0d | 2023-10-27 | 2023-10-27 | 34 |  |
| 36 |  | Import Pick-and-Place file into BOM Builder | 0d | 2023-10-27 | 2023-10-27 | 35 |  |
| 37 |  | Match each line item to real PartSync part | 1d? | 2023-10-30 | 2023-10-30 | 36 |  |
| 38 |  | Create Job directory on G: shared drive for .bmb | 0d | 2023-10-30 | 2023-10-30 | 37 |  |
| 39 |  | Save .bmb file to Job directory | 0d | 2023-10-30 | 2023-10-30 | 38 |  |
| 40 | 1.5 | **Add Bill of Materials to PartSync** | 1d? | 2023-10-30 | 2023-10-31 | 39, 31 | start no earlier than 2023-10-26 |
| 41 |  | Read wiki Ch10e | 1d? | 2023-10-31 | 2023-10-31 |  |  |
| 42 |  | Import .bmb into PartSync as part list record | 0d | 2023-10-30 | 2023-10-30 |  |  |
| 43 |  | Create purchase lilst for build of desired number + spares | 1d? | 2023-10-31 | 2023-10-31 | 42 |  |
| 44 |  | Create folder in repo Files_for_AssemblyHouse | 0d | 2023-10-31 | 2023-10-31 | 43 |  |
| 45 |  | Save purchase list pdf to Files_for_AssemblyHouse | 0d | 2023-10-31 | 2023-10-31 | 44 |  |
| 46 | 1.6 | **Check schematics & parts** | 2d | 2023-11-01 | 2023-11-02 |  | start no earlier than 2023-10-26 |
| 47 |  | Check schematic pdfs, parts list and fix errors | 1d | 2023-11-01 | 2023-11-01 | 40 |  |
| 48 |  | Iterate and communicate amongst designers | 1d | 2023-11-02 | 2023-11-02 | 47 |  |
| 49 | 1.7 | **Update personal Gantt chart** | 1d? | 2023-11-03 | 2023-11-03 | 46 | start no earlier than 2023-10-26 |
| 50 |  | Estimate timelines for post Test Plan Review design changes | 1d? | 2023-11-03 | 2023-11-03 |  |  |
| 51 |  | Estimate timelines for ordering parts and/or pastemask stencils | 1d? | 2023-11-03 | 2023-11-03 |  |  |
| 52 |  | Estimate timelines for layout tasks post Test Plan Review | 1d? | 2023-11-03 | 2023-11-03 |  |  |
| 53 |  | Estimate timeline for checking layout for correctness | 1d? | 2023-11-03 | 2023-11-03 |  |  |
| 54 |  | Estimate timelines for comms with vendors | 1d? | 2023-11-03 | 2023-11-03 |  |  |
| 55 |  | Estimate timelines for BearBuy orders to vendors | 1d? | 2023-11-03 | 2023-11-03 |  |  |
| 56 |  | Estimate timelines for vendor manufacturing & shipping | 1d? | 2023-11-03 | 2023-11-03 |  |  |
| 57 |  | Add all steps for testing procedures | 1d? | 2023-11-03 | 2023-11-03 |  |  |
| 58 | 1.8 | **Designers Review** | 1d? | 2023-11-03 | 2023-11-03 | 46 | start no earlier than 2023-10-26 |
| 59 |  | Chief and First mate and any other designers of the test board meet | 1d? | 2023-11-03 | 2023-11-03 |  |  |
| 60 |  | Compare each others Gantt charts and estimates | 1d? | 2023-11-03 | 2023-11-03 |  |  |
| 61 |  | Review schematics, test plan and final parts list together | 1d? | 2023-11-03 | 2023-11-03 |  |  |
| 62 |  | Correct any errors, make changes to hand-off docs | 1d? | 2023-11-03 | 2023-11-03 |  |  |
| 63 |  | Store corrected hand-off docs to git | 1d? | 2023-11-03 | 2023-11-03 |  |  |
| 64 | 1.9 | **Test Plan Review** | 2d? | 2023-11-06 | 2023-11-07 | 58 | start no earlier than 2023-10-26 |
| 65 |  | Invite 2 outside students | 1d? | 2023-11-06 | 2023-11-06 |  |  |
| 66 |  | Send them schematics, parts list, Gantt chart & Test Plan doc 2 days prior | 0d | 2023-11-06 | 2023-11-06 | 65 |  |
| 67 |  | Meet in person or zoom, walk through test plan & these docs | 1d? | 2023-11-07 | 2023-11-07 | 66 |  |
| 68 | 1.10 | **Post Test Plan Review updates** | 1d? | 2023-11-07 | 2023-11-08 | 64 | start no earlier than 2023-10-26 |
| 69 |  | Update schematics, parts list, Gantt chart and Test Plan | 1d? | 2023-11-08 | 2023-11-08 | 67 |  |
| 70 |  | Add reviewer names & review date to Test Plan doc | 0d | 2023-11-07 | 2023-11-07 |  |  |

| ID | WBS | Task | Duration | Start | Finish | Predecessors |
| --- | --- | --- | --- | --- | --- | --- |
| 71 |  | Create final set of hand-off documents (for advisor, layout person) | 0d | 2023-11-08 | 2023-11-08 | 69 |
| 72 | 1.11 | **Email advisor to notify re hand-off to layout person** | 1d? | 2023-11-09 | 2023-11-09 | 68 |
| 73 |  | Send email to your advisor | 1d? | 2023-11-09 | 2023-11-09 | 71 |
| 74 |  | Attach Test Plan doc | 1d? | 2023-11-09 | 2023-11-09 |  |
| 75 |  | Attach pdf of schematics | 1d? | 2023-11-09 | 2023-11-09 |  |
| 76 |  | Attach pdf of Gantt chart | 1d? | 2023-11-09 | 2023-11-09 |  |
| 77 |  | Attach pdf of purchasing list | 1d? | 2023-11-09 | 2023-11-09 |  |
| 78 |  | Don't expect your advisor to read these. | 1d? | 2023-11-09 | 2023-11-09 |  |
| 79 |  | Simply ensure that he/she understands this is the time of handoff | 1d? | 2023-11-09 | 2023-11-09 |  |
| 80 | 1.12 | **Email layout person to notify about hand-off to layout** | 1d? | 2023-11-09 | 2023-11-09 | 69 |
| 81 |  | List in email where hand-off docs are (git etc.) | 1d? | 2023-11-09 | 2023-11-09 |  |
| 82 | 1.13 | **Chief student orders parts** | 3d? | 2023-11-09 | 2023-11-13 | 69 |
| 83 |  | If some boards will assembled in house, assembly house should not order parts | 1d? | 2023-11-09 | 2023-11-09 |  |
| 84 |  | Parts should be ordered through BearBuy and shipped to BWRC | 1d? | 2023-11-10 | 2023-11-10 | 83 |
| 85 |  | Parts should be ordered early enough, checked for in stock | 1d? | 2023-11-09 | 2023-11-09 |  |
| 86 |  | Purchase list should be generated from PartSync part record | 1d? | 2023-11-09 | 2023-11-09 |  |
| 87 |  | Ensure that any non-board parts are added to part list, if needed (cables, whip antennas) | 1d? | 2023-11-09 | 2023-11-09 |  |
| 88 |  | Notify advisor of total cost | 1d? | 2023-11-10 | 2023-11-10 | 87 |
| 89 |  | Get advisor to tell Candy/Mikaela what chartstring to use | 1d? | 2023-11-13 | 2023-11-13 | 88 |
| 90 |  | Submit BearBuy requisition, mark as urgent, note shipping type | 1d? | 2023-11-13 | 2023-11-13 | 88 |
| 91 |  | Mouser can ship 2nd day, but Digikey screws up and ships ground | 1d? | 2023-11-13 | 2023-11-13 | 88 |
| 92 |  | Assign cart to Candy/Mikaela and talk to them personally to alert them | 1d? | 2023-11-13 | 2023-11-13 | 88 |
| 93 |  | After Candy/Mikaela push requisition, check your BearBuy for PO generation date | 1d? | 2023-11-13 | 2023-11-13 | 88 |
| 94 | 1.14 | **Layout person kickoff** | 1d? | 2023-11-09 | 2023-11-09 | 68 |
| 95 |  | Layout person checks Test Plan for completeness | 1d? | 2023-11-09 | 2023-11-09 |  |
| 96 |  | Notify designers of schematic errors, missing info. Iterate. | 1d? | 2023-11-09 | 2023-11-09 |  |
| 97 |  | Request prelimary stackup from board house | 1d? | 2023-11-09 | 2023-11-09 |  |
| 98 | 1.15 | **Rough out board size** | 8d? | 2023-11-10 | 2023-11-21 | 94 |
| 99 |  | Get footprint names from PartSync | 1d? | 2023-11-10 | 2023-11-10 |  |
| 100 |  | Add footprint names to schematic sheets | 1d? | 2023-11-13 | 2023-11-13 | 99 |
| 101 |  | Compile schematic and push to PCB side | 1d? | 2023-11-14 | 2023-11-14 | 100 |
| 102 |  | Place connectors and large components roughly | 1d? | 2023-11-15 | 2023-11-15 | 101 |
| 103 |  | Learn SolidWorks basics | 1d? | 2023-11-16 | 2023-11-16 | 102 |
| 104 |  | Read wiki PCB Tool Ch08, overview & SMA spacing | 1d? | 2023-11-17 | 2023-11-17 | 103 |
| 105 |  | Look at panel in SolidWorks and determine # per panel | 1d? | 2023-11-20 | 2023-11-20 | 104 |
| 106 |  | Update Test Plan doc with screenshots of board & panel | 1d? | 2023-11-21 | 2023-11-21 | 105 |
| 107 | 1.16 | **Board layout** | 7d? | 2023-11-10 | 2023-11-20 | 94 |
| 108 |  | Add/create package models in PackEdit | 7d | 2023-11-10 | 2023-11-20 |  |
| 109 |  | Add/edit footprints to BWRC.PcbLib and/or schematics | 1d | 2023-11-10 | 2023-11-10 |  |
| 110 |  | Order a few parts if necessary to check parts to 1:1 printed footprints | 1d | 2023-11-10 | 2023-11-10 |  |
| 111 |  | Create board outline | 1d | 2023-11-10 | 2023-11-10 |  |
| 112 |  | Create board statckup as all signal layers | 1d | 2023-11-10 | 2023-11-10 |  |
| 113 |  | Create edge keepouts for polygon pours for pwd, gnd layers | 1d | 2023-11-10 | 2023-11-10 |  |
| 114 |  | Modify placement of parts | 1d | 2023-11-10 | 2023-11-10 |  |
| 115 |  | Create all DRC rules in Altium's rule editor | 1d | 2023-11-10 | 2023-11-10 |  |
| 116 |  | Set Altium project options for net colors, rooms, comparator | 1d | 2023-11-10 | 2023-11-10 |  |
| 117 |  | Update schematics with net names for every net | 1d | 2023-11-10 | 2023-11-10 |  |
| 118 |  | Update schematics with net classes for controlled impedance traces | 1d | 2023-11-10 | 2023-11-10 |  |
| 119 |  | Create mounting holes and keepouts for screw heads, standoffs | 1d | 2023-11-10 | 2023-11-10 |  |
| 120 |  | Create SolidWorks assembly of test setup | 1d | 2023-11-10 | 2023-11-10 |  |
| 121 |  | Set placement of board-to-board connectors | 1d? | 2023-11-10 | 2023-11-10 |  |
| 122 |  | Select mechanical parts & order from McMaster | 1d? | 2023-11-10 | 2023-11-10 |  |
| 123 |  | Buy new parts not previously used to check footprints | 1d? | 2023-11-10 | 2023-11-10 |  |
| 124 |  | Check vacation schedule for anyone in Bear Buy approval path | 1d? | 2023-11-10 | 2023-11-10 |  |
| 125 |  | Check with Purchasing if Digikey 2nd day is still screwed up | 1d? | 2023-11-10 | 2023-11-10 |  |
| 126 |  | Double-check all bypass caps and polarized caps | 1d? | 2023-11-10 | 2023-11-10 |  |
| 127 |  | Determine if board can fit within Beam On jig for in-house assembly | 1d? | 2023-11-10 | 2023-11-10 |  |
| 128 |  | Add ficucials for assembly | 1d? | 2023-11-10 | 2023-11-10 |  |
| 129 |  | Add layer numbering test structure | 1d? | 2023-11-10 | 2023-11-10 |  |
| 130 |  | Check tented vs. untented vias | 1d? | 2023-11-10 | 2023-11-10 |  |
| 131 |  | Remove internal pads | 1d? | 2023-11-10 | 2023-11-10 |  |
| 132 |  | Set line width for controlled impedance traces | 1d? | 2023-11-10 | 2023-11-10 |  |
| 133 |  | Create fab drawing and add to Altium project | 1d? | 2023-11-10 | 2023-11-10 |  |
| 134 |  | Note controlled impedance trace widths in fab drawing | 1d? | 2023-11-10 | 2023-11-10 |  |
| 135 |  | Note mounted cross-sections on fab drawing | 1d? | 2023-11-10 | 2023-11-10 |  |
| 136 |  | Check fab drawing drill table for all hole tolerances | 1d? | 2023-11-10 | 2023-11-10 |  |
| 137 |  | Add free text to silkscreen layers | 1d? | 2023-11-10 | 2023-11-10 |  |
| 138 |  | Add BWRC logo, name, date and serial number block to silkscreen | 1d? | 2023-11-10 | 2023-11-10 |  |
| 139 |  | View bottom silkscreen from backside to check rotation of text | 1d? | 2023-11-10 | 2023-11-10 |  |
| 140 |  | Set up Outjob file for test point report, ODB, Gerbers, fab drawing | 1d? | 2023-11-10 | 2023-11-10 |  |

| ID | WBS | Task | Duration | Start | Finish | Predecessors |
| --- | --- | --- | --- | --- | --- | --- |
| 141 |  | Update the fab drawing with latest changes | 1d? | 2023-11-10 | 2023-11-10 |  |
| 142 |  | Check no stale via types are inadvertently added | 1d? | 2023-11-10 | 2023-11-10 |  |
| 143 |  | Add free ground vias for return currents crossing layers | 1d? | 2023-11-10 | 2023-11-10 |  |
| 144 |  | Create custom room on PCB side if needed. Adjust project options. | 1d? | 2023-11-10 | 2023-11-10 |  |
| 145 |  | Check necking and isolation settings in Polygon Manager | 1d? | 2023-11-10 | 2023-11-10 |  |
| 146 |  | Check thermal reliefs and via direct-connects | 1d? | 2023-11-10 | 2023-11-10 |  |
| 147 |  | In Rules editor, ensure all rules are enabled when DRC checking | 1d? | 2023-11-10 | 2023-11-10 |  |
| 148 |  | Set diff pair rules carefully | 1d? | 2023-11-10 | 2023-11-10 |  |
| 149 |  | Create polygon regions on pwer layers for voltage domains | 1d? | 2023-11-10 | 2023-11-10 |  |
| 150 |  | Layout out all traces after fanning out pwr, gnd | 1d? | 2023-11-10 | 2023-11-10 |  |
| 151 | 1.17 | **Create board output files** | 1d? | 2023-11-21 | 2023-11-21 | 107 |
| 152 |  | Generate Gerber files for BOM Builder checking | 1d? | 2023-11-21 | 2023-11-21 |  |
| 153 |  | Create folder in repo, Files_for_BoardHouse | 1d? | 2023-11-21 | 2023-11-21 |  |
| 154 |  | Generate ODB .zip file for board house | 1d? | 2023-11-21 | 2023-11-21 |  |
| 155 |  | Create pdf of fab drawing | 1d? | 2023-11-21 | 2023-11-21 |  |
| 156 |  | Create test point file for board house | 1d? | 2023-11-21 | 2023-11-21 |  |
| 157 |  | Save ODB, test pt repot, fab drawing to Files_for_BoardHouse | 1d? | 2023-11-21 | 2023-11-21 |  |
| 158 | 1.18 | **Check package models to footprints with BOM Builder** | 1d? | 2023-11-22 | 2023-11-22 | 151 |
| 159 |  | Use Outjob file to generate a new Pick-and-Place file after layout | 1d? | 2023-11-22 | 2023-11-22 |  |
| 160 |  | This generation of Pick-and-Place file now has XYRS layout info | 1d? | 2023-11-22 | 2023-11-22 |  |
| 161 |  | Import XYRS info into BOM Builder | 1d? | 2023-11-22 | 2023-11-22 |  |
| 162 |  | Import Gerber files of layout into BOM Builder | 1d? | 2023-11-22 | 2023-11-22 |  |
| 163 |  | Check each line item entry while zooming in Assembly view | 1d? | 2023-11-22 | 2023-11-22 |  |
| 164 |  | Ensure packages all match to footprints | 1d? | 2023-11-22 | 2023-11-22 |  |
| 165 |  | Ensure traces all exit footprints orthogonally | 1d? | 2023-11-22 | 2023-11-22 |  |
| 166 |  | Save out Smart PDF from BOM Builder | 1d? | 2023-11-22 | 2023-11-22 |  |
| 167 |  | Save out Assembly BOM from BOM Builder | 1d? | 2023-11-22 | 2023-11-22 |  |
| 168 |  | In board repo, create Files_for_AssemblyHouse folder | 1d? | 2023-11-22 | 2023-11-22 |  |
| 169 |  | Prefix file names of Smart PDF and Assembly BOM with date | 1d? | 2023-11-22 | 2023-11-22 |  |
| 170 |  | Save both files to Files_for_AssemblyHouse folder | 1d? | 2023-11-22 | 2023-11-22 |  |
| 171 |  | Tell student designers to also do this check of package models to Gerbers | 1d? | 2023-11-22 | 2023-11-22 |  |
| 172 | 1.19 | **Prepare Request For Quote (RFQ) to board house** | 1d? | 2023-11-22 | 2023-11-22 | 151 |
| 173 |  | Create RFQ sub-folder in Files_for_BoardHouse dir | 1d? | 2023-11-22 | 2023-11-22 |  |
| 174 |  | Check prev students' board repos for example RFQ pptx | 1d? | 2023-11-22 | 2023-11-22 |  |
| 175 |  | Make pptx file asking for what the quote should cover | 1d? | 2023-11-22 | 2023-11-22 |  |
| 176 |  | In pptx, ask for number of boards to be fabbed, dielectric mat & plating. | 1d? | 2023-11-22 | 2023-11-22 |  |
| 177 |  | In pptx, request quotes for both 5-day turn and 10-day turn | 1d? | 2023-11-22 | 2023-11-22 |  |
| 178 |  | In pptx, don't forget to ask for mounted cross-sections. | 1d? | 2023-11-22 | 2023-11-22 |  |
| 179 |  | Add dated ODB .zip file to this sub-folder | 1d? | 2023-11-22 | 2023-11-22 |  |
| 180 |  | Add preliminary stackup, fab drwg pdf, test point report, to this sub-folder | 1d? | 2023-11-22 | 2023-11-22 |  |
| 181 |  | Ensure to ask for specials: controlled impedance traces, vias in pads | 1d? | 2023-11-22 | 2023-11-22 |  |
| 182 | 1.20 | **Organize & log communications with vendors** | 1d? | 2023-11-23 | 2023-11-23 | 172 |
| 183 |  | Create communications_to_vendors txt file | 1d? | 2023-11-23 | 2023-11-23 |  |
| 184 |  | Look in prev students' repos' Test Plan folder for this txt file | 1d? | 2023-11-23 | 2023-11-23 |  |
| 185 |  | Format the text of an email to board house | 1d? | 2023-11-23 | 2023-11-23 |  |
| 186 |  | List the full name of each included file | 1d? | 2023-11-23 | 2023-11-23 |  |
| 187 |  | Make sure each file name starts with the date | 1d? | 2023-11-23 | 2023-11-23 |  |
| 188 |  | Save this communications_to_vendors.txt to Test Plan folder | 1d? | 2023-11-23 | 2023-11-23 |  |
| 189 | 1.21 | **Chief student sends RFQ to board house** | 1d? | 2023-11-24 | 2023-11-24 | 182 |
| 190 |  | Email designers to pull these files from the repo | 1d? | 2023-11-24 | 2023-11-24 |  |
| 191 |  | Have them double-check for errors | 1d? | 2023-11-24 | 2023-11-24 |  |
| 192 |  | Have them forward the email to the board house w/attachments | 1d? | 2023-11-24 | 2023-11-24 |  |
| 193 |  | Include attachments: prelim stackup, ODB, fab drwg, test point report & pptx | 1d? | 2023-11-24 | 2023-11-24 |  |
| 194 |  | Tell students to cc layout person on this email to board house | 1d? | 2023-11-24 | 2023-11-24 |  |
| 195 |  | Tell students to alert advisor that quote is imminent | 1d? | 2023-11-24 | 2023-11-24 |  |
| 196 |  | Have students learn to how to create a BearBuy requisition | 1d? | 2023-11-24 | 2023-11-24 |  |
| 197 |  | Have students notify Candy/Mikaela that this requisition will come to them soon | 1d? | 2023-11-24 | 2023-11-24 |  |
| 198 | 1.22 | **Chief student submits BearBuy requisition after board quote arrives** | 1d? | 2023-11-27 | 2023-11-27 | 189 |
| 199 |  | Notify advisor re amount of quote | 1d? | 2023-11-27 | 2023-11-27 |  |
| 200 |  | Get advisor to tell Candy/Mikaela what chartstring to use | 1d? | 2023-11-27 | 2023-11-27 |  |
| 201 |  | Submit BearBuy requisition, mark as urgent, note shipping type | 1d? | 2023-11-27 | 2023-11-27 |  |
| 202 |  | Shipping type: will you drive to pick up, or have boards sent to BWRC? | 1d? | 2023-11-27 | 2023-11-27 |  |
| 203 |  | Assign cart to Candy/Mikaela and talk to them personally to alert them | 1d? | 2023-11-27 | 2023-11-27 |  |
| 204 |  | Email board house that PO is in process | 1d? | 2023-11-27 | 2023-11-27 |  |
| 205 |  | Email board house if board house CAM shop should wait for updated files | 1d? | 2023-11-27 | 2023-11-27 |  |
| 206 |  | After Candy/Mikaela push requisition, check your BearBuy for PO generation date | 1d? | 2023-11-27 | 2023-11-27 |  |
| 207 | 1.23 | **Check ODB files with Viewmate Deluxe & EMS Magician** | 1d? | 2023-11-23 | 2023-11-23 | 158 |
| 208 |  | Set up Viewmate Deluxe and read in ODB files | 1d? | 2023-11-23 | 2023-11-23 |  |
| 209 |  | Create rules to check in EMS Magician | 1d? | 2023-11-23 | 2023-11-23 |  |
| 210 |  | If errors, update design and re-generate all output files | 1d? | 2023-11-23 | 2023-11-23 |  |

| ID | WBS | Task | Duration | Start | Finish | Predecessors | Constraint |
| --- | --- | --- | --- | --- | --- | --- | --- |
| 211 |  | Tell student designers to also do this checking | 1d? | 2023-11-23 | 2023-11-23 |  |  |
| 212 | 1.24 | **Chief student works with board house CAM shop** | 1d? | 2023-11-24 | 2023-11-24 | 207 |  |
| 213 |  | Chief student monitors BearBuy for PO sent to board house | 1d? | 2023-11-24 | 2023-11-24 |  |  |
| 214 |  | Make any last minute changes, re-generate all output files | 1d? | 2023-11-24 | 2023-11-24 |  |  |
| 215 |  | If changes, create folder in repo, Final_files_to_BoardHouse | 1d? | 2023-11-24 | 2023-11-24 |  |  |
| 216 |  | Prefix all files with date and save complete set to that directory | 1d? | 2023-11-24 | 2023-11-24 |  |  |
| 217 |  | Compose text of email to board house, listing these files | 1d? | 2023-11-24 | 2023-11-24 |  |  |
| 218 |  | Save text to communications_to_vendors.txt, with date | 1d? | 2023-11-24 | 2023-11-24 |  |  |
| 219 |  | CAM shop at board house will create a ticket portal at their web site | 1d? | 2023-11-24 | 2023-11-24 |  |  |
| 220 |  | Fix any errors that the CAM shop requires | 1d? | 2023-11-24 | 2023-11-24 |  |  |
| 221 |  | Re-generate all files, prefix with date and save to folder | 1d? | 2023-11-24 | 2023-11-24 |  |  |
| 222 |  | Update communications_to_vendors.txt with any updates, for the record | 1d? | 2023-11-24 | 2023-11-24 |  |  |
| 223 |  | The 5-day or 10-day turn clock starts AFTER CAM agrees to go ahead | 1d? | 2023-11-24 | 2023-11-24 |  |  |
| 224 |  | Make sure to tell CAM shop how to ship or if you will pick up | 1d? | 2023-11-24 | 2023-11-24 |  |  |
| 225 | 1.25 | **Prepare RFQ to stencil house for pastemask stencil & Durostone holder** | 1d? | 2023-11-24 | 2023-11-24 | 207 |  |
| 226 |  | Create folder in repo, Files_for_StencilHouse | 1d? | 2023-11-24 | 2023-11-24 |  |  |
| 227 |  | Store ODB file and fab drawing, with date prefixed to this folder | 1d? | 2023-11-24 | 2023-11-24 |  |  |
| 228 |  | Board size must be less than 5" x 3.5" for this in-house assembly | 1d? | 2023-11-24 | 2023-11-24 |  |  |
| 229 |  | Format text of email to Beam On for RFQ, store in comms_to_vendors | 1d? | 2023-11-24 | 2023-11-24 |  |  |
| 230 | 1.26 | **Chief student sends RFQ to stencil house** | 1d? | 2023-11-27 | 2023-11-27 | 225 |  |
| 231 |  | Have student forward the email w/attachments to stencil house, cc layout person | 1d? | 2023-11-27 | 2023-11-27 |  |  |
| 232 | 1.27 | **Chief student submits BearBuy requisition after stencil quote arrives** | 1d? | 2023-11-28 | 2023-11-28 | 230 |  |
| 233 |  | Notify advisor re amount of quote | 1d? | 2023-11-28 | 2023-11-28 |  |  |
| 234 |  | Get advisor to tell Candy/Mikaela what chartstring to use | 1d? | 2023-11-28 | 2023-11-28 |  |  |
| 235 |  | Submit BearBuy requisition, mark as urgent, note shipping type | 1d? | 2023-11-28 | 2023-11-28 |  |  |
| 236 |  | Email stencil house that PO is in process | 1d? | 2023-11-28 | 2023-11-28 |  |  |
| 237 |  | Watch BearBuy to see when PO goes through | 1d? | 2023-11-28 | 2023-11-28 |  |  |
| 238 |  | Beam On usually makes the stencil in one day and then ships it overnight from SJ | 1d? | 2023-11-28 | 2023-11-28 |  |  |
| 239 | 1.28 | **Prepare RFQ to assembly house** | 1d? | 2023-11-24 | 2023-11-24 | 207 |  |
| 240 |  | Create sub-folder for RFQ_to_AssemblyHouse within Files_for_AssemblyHouse | 1d? | 2023-11-24 | 2023-11-24 |  |  |
| 241 |  | Create pptx RFQ asking for # to stuff, instructions re SMA heat sinks, variant builds | 1d? | 2023-11-24 | 2023-11-24 |  |  |
| 242 |  | Specifiy parts you will supply, number of bare boards you will supply | 1d? | 2023-11-24 | 2023-11-24 |  |  |
| 243 |  | Specify number of SMA heat sinks you will supply, and if stencil jig and pastemask stencils | 1d? | 2023-11-24 | 2023-11-24 |  |  |
| 244 |  | Prefix with date, and store ODB, fab drwg, Smart PDF, Assembly BOM, pptx in this sub-folder | 1d? | 2023-11-24 | 2023-11-24 |  |  |
| 245 |  | Prepare text of email to assembly house for RFQ, store in comms_to_vendors.txt | 1d? | 2023-11-24 | 2023-11-24 |  |  |
| 246 | 1.29 | **Chief student sends RFQ to assembly house** | 1d? | 2023-11-27 | 2023-11-27 | 239 |  |
| 247 |  | Have student forward the email w/attachments to assembly house, cc layout person | 1d? | 2023-11-27 | 2023-11-27 |  |  |
| 248 | 1.30 | **Chief student submits BearBuy requisition after assembly quote arrives** | 1d? | 2023-11-28 | 2023-11-28 | 246 |  |
| 249 |  | Notify advisor re amount of quote | 1d? | 2023-11-28 | 2023-11-28 |  |  |
| 250 |  | Get advisor to tell Candy/Mikaela what chartstring to use | 1d? | 2023-11-28 | 2023-11-28 |  |  |
| 251 |  | Submit BearBuy requisition, note shipping type or if you will pick up | 1d? | 2023-11-28 | 2023-11-28 |  |  |
| 252 |  | Email assembly house that PO is in process | 1d? | 2023-11-28 | 2023-11-28 |  |  |
| 253 |  | Watch BearBuy to see when PO goes through | 1d? | 2023-11-28 | 2023-11-28 |  |  |
| 254 |  | Communicate with assembly house if boards should be sent to BWRC or you will pick up | 1d? | 2023-11-28 | 2023-11-28 |  |  |
| 255 | 1.31 | **Board Sent for fabrication** | 8d? | 2023-11-27 | 2023-12-06 | 239 |  |
| 256 |  | Fabrication | 7d? | 2023-11-27 | 2023-12-05 |  |  |
| 257 |  | Check boards upon return | 1d? | 2023-12-06 | 2023-12-06 | 256 |  |
| 258 |  | Chips Arrive at BWRC | 1d? | 2023-10-30 | 2023-10-30 |  | start no earlier than 2023-10-30 |
| 259 |  | Board Sent for assembly | 7d? | 2023-12-07 | 2023-12-15 | 257, 258 |  |
| 260 | 1.34 | **Bringup** | 18d? | 2023-11-28 | 2023-12-21 | 246 |  |
| 261 |  | Collect equipment | 1d? | 2023-11-28 | 2023-11-28 |  |  |
| 262 |  | Program Arty A7-100T | 7d? | 2023-11-28 | 2023-12-06 |  |  |
| 263 |  | Bring up scan chain | 7d? | 2023-11-28 | 2023-12-06 |  |  |
| 264 |  | Bring up Rocket | 7d? | 2023-12-07 | 2023-12-15 | 257 |  |
| 265 |  | Program SRAM BIST | 2d? | 2023-12-18 | 2023-12-19 | 264 |  |
| 266 |  | Prepare SRAM BIST patterns | 2d? | 2023-12-20 | 2023-12-21 | 265 |  |
| 267 |  | Test SRAMs with BIST, varying frequency and pattern | 4d? | 2023-11-28 | 2023-12-01 |  |  |
| 268 |  | Test SRAMs with varying supply voltage | 1d? | 2023-11-28 | 2023-11-28 |  |  |

## Version 2 (saved 2023-10-27)

Note of the change: copy gantt, schematics, bom, rename folders

Last finish stays 2023-12-21.

Changed:

| ID | Task | Other |
| --- | --- | --- |
| 18 | Add manufacturer's part number to all ICs, conns | was named Add manufacturer's part numberto all ICs, conns |
